Schedule from Planner, 2013-11-19 to 2014-03-22.

## Calendars

- Default: Mon-Sat 08:00-12:00, 13:00-17:00; Sun off. Exceptions (off unless hours are given): 2013-11-20, 2013-12-25, 2014-01-01.

## Resources

| Resource |
| --- |
| Fabio |

## Schedule

| ID | WBS | Task | Duration | Start | Finish | Predecessors | Complete | Constraint | Work |
| --- | --- | --- | --- | --- | --- | --- | --- | --- | --- |
| 1 | 1 | **Criar Aplicação** | 2.12d | 2013-11-19 | 2013-11-22 |  | 100% |  | 20h |
| 2 | 1.1 | Criar Aplicacao Yii |  | 2013-11-19 | 2013-11-19 |  | 100% |  | 1h |
| 3 | 1.2 | Criar github | 1d | 2013-11-19 | 2013-11-21 | 2 | 100% |  | 1h |
| 4 | 1.3 | Configurar urlHelper | 1d | 2013-11-21 | 2013-11-22 | 3 | 100% |  | 1h |
| 5 | 1.4 | **Configurar Banco de Dados** | 2d | 2013-11-19 | 2013-11-22 | 2 | 100% |  | 17h |
| 6 | 1.4.1 | Criar Banco de dados | 1d | 2013-11-19 | 2013-11-21 |  | 100% |  | 1h |
| 7 | 1.4.2 | Resolver problema string vazia x numeros | 1d | 2013-11-21 | 2013-11-22 | 6 | 100% |  | 16h |
| 8 | 2 | **Controles Básicos** |  | 2013-11-22 | 2013-11-30 | 1 |  |  | 48h |
| 9 | 2.1 | Controle Códigos |  | 2013-11-22 | 2013-11-23 |  | 100% |  | 8h |
| 10 | 2.2 | **Layout** | 2d | 2013-11-23 | 2013-11-26 | 9 |  |  | 24h |
| 11 | 2.2.1 | Inserir logotipos e ícones tela inicial | 1d | 2013-11-23 | 2013-11-25 |  | 100% |  | 16h |
| 12 | 2.2.2 | Menu |  | 2013-11-25 | 2013-11-26 | 11 |  |  | 8h |
| 13 | 2.3 | **Localização** | 4d | 2013-11-26 | 2013-11-30 | 10 |  |  | 16h |
| 14 | 2.3.1 | Fazer exemplo manutenção com números formatados | 1d | 2013-11-26 | 2013-11-27 |  |  | start no earlier than 2013-11-18 | 4h |
| 15 | 2.3.2 | Fazer exemplo manutenção com datas formatadas | 1d | 2013-11-27 | 2013-11-28 | 14 |  |  | 4h |
| 16 | 2.3.3 | Traduzir mensagens Yii | 1d | 2013-11-28 | 2013-11-29 | 15 |  |  | 4h |
| 17 | 2.3.4 | Traduzir templates | 1d | 2013-11-29 | 2013-11-30 | 16 |  |  | 4h |
| 18 | 3 | **Segurança** | 4d | 2013-11-30 | 2013-12-05 | 8 | 18% |  | 20h |
| 19 | 3.1 | Criar Manutenção Usuário | 1d | 2013-11-30 | 2013-12-02 | 9 | 20% |  | 4h |
| 20 | 3.2 | Adicionar Funcionalidade Login | 1d | 2013-12-02 | 2013-12-03 | 19 |  |  | 4h |
| 21 | 3.3 | Campos alteracao/criacao | 1d | 2013-12-03 | 2013-12-04 | 20 | 50% |  | 4h |
| 22 | 3.4 | Instalar módulo SRBAC | 1d | 2013-12-04 | 2013-12-05 | 21 |  |  | 8h |
| 23 | 4 | **Financeiro** | 62d | 2013-12-05 | 2014-02-18 | 18 |  |  | 272h |
| 24 | 4.1 | Manutenção Pessoas | 1d | 2013-12-05 | 2013-12-06 |  |  |  | 8h |

| ID | WBS | Task | Duration | Start | Finish | Predecessors | Work |
| --- | --- | --- | --- | --- | --- | --- | --- |
| 25 | 4.2 | **Manutenção Títulos** | 2d | 2013-12-06 | 2013-12-09 | 24 | 32h |
| 26 | 4.2.1 | À Receber | 1d | 2013-12-06 | 2013-12-07 |  | 16h |
| 27 | 4.2.2 | À Pagar | 1d | 2013-12-07 | 2013-12-09 | 26 | 16h |
| 28 | 4.3 | Liquidação Títulos | 1d | 2013-12-09 | 2013-12-10 | 25 | 24h |
| 29 | 4.4 | Emissão Recibos | 1d | 2013-12-10 | 2013-12-11 | 28 | 8h |
| 30 | 4.5 | Emissão Boletos | 1d | 2013-12-11 | 2013-12-12 | 29 | 16h |
| 31 | 4.6 | Integração Boletos Bradesco | 1d | 2014-01-27 | 2014-01-28 | 40 | 40h |
| 32 | 4.7 | Manutenção Cheques |  | 2014-01-28 | 2014-01-30 | 31 | 16h |
| 33 | 4.8 | Controle Cobrador Externo |  | 2014-01-30 | 2014-02-04 | 32 | 32h |
| 34 | 4.9 | Fechamentos Pendentes |  | 2014-02-04 | 2014-02-07 | 33 | 24h |
| 35 | 4.10 | Cadastro de Formas de Pagamento |  | 2014-02-07 | 2014-02-07 | 34 | 4h |
| 36 | 4.11 | Ranking Atraso |  | 2014-02-07 | 2014-02-10 | 35 | 16h |
| 37 | 4.12 | Controle Limite de Crédito |  | 2014-02-10 | 2014-02-12 | 36 | 16h |
| 38 | 4.13 | Portador |  | 2014-02-12 | 2014-02-13 | 37 | 4h |
| 39 | 4.14 | Fechamento de Caixas |  | 2014-02-13 | 2014-02-18 | 38 | 32h |
| 40 | 5 | **Caixas** |  | 2013-12-12 | 2014-01-27 | 30 | 296h |
| 41 | 5.1 | **Notas Fiscais** |  | 2013-12-12 | 2014-01-07 |  | 160h |
| 42 | 5.1.1 | Manutenção Notas Fiscais |  | 2013-12-12 | 2013-12-24 |  | 80h |
| 43 | 5.1.2 | NFE |  | 2013-12-24 | 2013-12-31 | 42 | 40h |
| 44 | 5.1.3 | NFCE |  | 2013-12-31 | 2014-01-07 | 43 | 40h |
| 45 | 5.2 | **Negócio** |  | 2014-01-07 | 2014-01-27 | 41 | 136h |
| 46 | 5.2.1 | Manutenção Negócio |  | 2014-01-07 | 2014-01-18 |  | 80h |
| 47 | 5.2.2 | Geração Notinhas |  | 2014-01-18 | 2014-01-21 | 46 | 16h |
| 48 | 5.2.3 | Geração NFCE |  | 2014-01-21 | 2014-01-23 | 47 | 16h |
| 49 | 5.2.4 | Geração NFE |  | 2014-01-23 | 2014-01-25 | 48 | 16h |
| 50 | 5.2.5 | Geração Títulos |  | 2014-01-25 | 2014-01-27 | 49 | 8h |

| ID | WBS | Task | Start | Finish | Predecessors | Work |
| --- | --- | --- | --- | --- | --- | --- |
| 51 | 6 | **Estoque** | 2014-02-18 | 2014-03-07 | 23 | 120h |
| 52 | 6.1 | Grupo e Subgrupo de Produto | 2014-02-18 | 2014-02-19 |  | 8h |
| 53 | 6.2 | Cadastro de Produtos | 2014-02-19 | 2014-02-21 | 52 | 16h |
| 54 | 6.3 | Alterações de Preço | 2014-02-21 | 2014-02-22 | 53 | 8h |
| 55 | 6.4 | Cadastro de Marcas | 2014-02-22 | 2014-02-22 | 54 | 4h |
| 56 | 6.5 | **Entradas de Mercadoria** | 2014-02-22 | 2014-03-04 | 55 | 64h |
| 57 | 6.5.1 | Importação XML NFE's | 2014-02-22 | 2014-02-28 |  | 40h |
| 58 | 6.5.2 | Cálculo Preços de venda | 2014-02-28 | 2014-03-04 | 57 | 24h |
| 59 | 6.6 | Unidade de Medida | 2014-03-04 | 2014-03-05 | 56 | 4h |
| 60 | 6.7 | Etiquetas de Preço | 2014-03-05 | 2014-03-07 | 59 | 16h |
| 61 | 7 | **Fiscal** | 2014-03-07 | 2014-03-22 | 51 | 110h |
| 62 | 7.1 | Integração Contabilidade | 2014-03-07 | 2014-03-19 |  | 80h |
| 63 | 7.2 | Cadastro ECF | 2014-03-19 | 2014-03-19 | 62 | 4h |
| 64 | 7.3 | Cadastro Empresa/Filial | 2014-03-19 | 2014-03-20 | 63 | 4h |
| 65 | 7.4 | Cadastro Pais/Estado/Cidade | 2014-03-20 | 2014-03-20 | 64 | 6h |
| 66 | 7.5 | Cadastro Natureza de Operacao | 2014-03-20 | 2014-03-21 | 65 | 4h |
| 67 | 7.6 | Cadastro Tributacao | 2014-03-21 | 2014-03-21 | 66 | 4h |
| 68 | 7.7 | Cadastro Tributacao x Natureza de Operacao | 2014-03-21 | 2014-03-22 | 67 | 8h |
